# Fabricação e Fornecimento do Tanque de Armazenamento TQ-960-30/1 (API 650) – Obra 2026-000037

Schedule from MS Project XML, 2026-09-01 to 2026-11-25.

## Calendars

- Padrao_Caldeiraria: Mon-Fri 08:00-12:00, 13:00-17:00; Sat-Sun off.

## Resources

| Resource | Rate |
| --- | --- |
| Engenheiro Mecânico de Projetos / Cálculos | 110 |
| Projetista Mecânico / Modelador 3D | 65 |
| Comprador Técnico Industrial / Diligenciamento | 55 |
| Caldeireiro de Traçado e Corte Plasma | 50 |
| Operador de Calandra e Conformação | 50 |
| Soldador Qualificado ASME IX (TIG/MIG/SAW) | 65 |
| Caldeireiro Montador / Ajustador de Equipamentos | 55 |
| Inspetor de Soldagem / END Nível II (SNQC) | 90 |
| Pintor Industrial / Tratador de Superfície Inox | 45 |
| Ajudante Operacional de Caldeiraria e Fábrica | 30 |
| Rigger / Operador de Carga, Berço e Expedição | 45 |

## Schedule

| ID | WBS | Task | Duration | Start | Finish | Predecessors | Resources | Work | Estimativa Otimista | Estimativa Provavel | Estimativa Pessimista | Indice Criticidade (%) | Pacote WBS / EAP |
| --- | --- | --- | --- | --- | --- | --- | --- | --- | --- | --- | --- | --- | --- |
| 1 | 1.0 | **1.0 ATIVIDADES (Peso: 2%)** | 1d | 2026-09-01 | 2026-09-02 |  |  |  |  |  |  |  |  |
| 2 | 1.1 | Kick-off Meeting & Alinhamento de Requisitos (Oxiteno S.A. / Grupo Indorama) | 1d | 2026-09-01 | 2026-09-01 |  | Engenheiro Mecânico de Projetos / Cálculos; Projetista Mecânico / Modelador 3D | 16h | 0.8 d | 1.0 d | 1.5 d | 100.0% | 1.0 - ATIVIDADES |
| 3 | 1.2 | Formalização do Termo de Abertura do Projeto (TAP) & Governança | 1d | 2026-09-01 | 2026-09-02 | 2 | Engenheiro Mecânico de Projetos / Cálculos | 8h | 0.8 d | 1.0 d | 1.5 d | 100.0% | 1.0 - ATIVIDADES |
| 4 | 2.0 | **2.0 METODOS E PROCESSOS (Peso: 20%)** | 20d | 2026-09-02 | 2026-09-22 |  |  |  |  |  |  |  |  |
| 5 | 2.1 | Projeto Executivo & Detalhamento Mecânico 2D/3D (TQ-0960-30) | 4.25d | 2026-09-02 | 2026-09-08 | 3 | Projetista Mecânico / Modelador 3D; Engenheiro Mecânico de Projetos / Cálculos [50%] | 51h | 3.4 d | 4.3 d | 6.4 d | 100.0% | 2.0 - METODOS E PROCESSOS |
| 6 | 2.2 | Memórias de Cálculo Estrutural e Pressão (API 650 / ASME) | 3.5d | 2026-09-08 | 2026-09-14 | 5 | Engenheiro Mecânico de Projetos / Cálculos | 28h | 2.9 d | 3.6 d | 5.4 d | 100.0% | 2.0 - METODOS E PROCESSOS |
| 7 | 2.3 | Elaboração do PIT (Plano de Inspeção e Testes) e EPS/RQPS | 2.75d | 2026-09-14 | 2026-09-17 | 6 | Engenheiro Mecânico de Projetos / Cálculos [50%]; Inspetor de Soldagem / END Nível II (SNQC) | 33h | 2.2 d | 2.8 d | 4.2 d | 100.0% | 2.0 - METODOS E PROCESSOS |
| 8 | 2.4 | Submissão, Análise e Aprovação Técnica pelo Cliente | 3.5d | 2026-09-17 | 2026-09-22 | 7 | Engenheiro Mecânico de Projetos / Cálculos [50%] | 14h | 2.9 d | 3.6 d | 5.4 d | 100.0% | 2.0 - METODOS E PROCESSOS |
| 9 | 3.0 | **3.0 SUPRIMENTOS (Peso: 30%)** | 30d | 2026-09-08 | 2026-10-08 |  |  |  |  |  |  |  |  |
| 10 | 3.1 | Requisição de Compras & Cotação de Matérias-Primas Inox | 3.12d | 2026-09-08 | 2026-09-14 | 8 | Comprador Técnico Industrial / Diligenciamento | 25h | 2.6 d | 3.2 d | 4.8 d | 100.0% | 3.0 - SUPRIMENTOS |
| 11 | 3.2 | Fabricação e Entrega de Chapas Inox SA-240 304 e Tubos pela Usina | 12.75d | 2026-09-14 | 2026-09-30 | 10 | Comprador Técnico Industrial / Diligenciamento [25%] | 25h | 10.2 d | 12.8 d | 19.2 d | 99.9% | 3.0 - SUPRIMENTOS |
| 12 | 3.3 | Aquisição de Forjados, Flanges, Juntas PTFE e Estojos (Paralelo) | 6.38d | 2026-09-14 | 2026-09-22 | 10 | Comprador Técnico Industrial / Diligenciamento [50%] | 25h | 5.1 d | 6.4 d | 9.6 d | 0.1% | 3.0 - SUPRIMENTOS |
| 13 | 3.4 | Recebimento, Inspeção Dimensional e Rastreabilidade de MP na Fábrica | 5.25d | 2026-09-30 | 2026-10-08 | 11, 12 | Inspetor de Soldagem / END Nível II (SNQC); Ajudante Operacional de Caldeiraria e Fábrica | 84h | 4.2 d | 5.3 d | 7.9 d | 100.0% | 3.0 - SUPRIMENTOS |
| 14 | 4.0 | **4.0 FABRICAÇÃO E MONTAGEM (Peso: 40%)** | 36d | 2026-10-08 | 2026-11-13 |  |  |  |  |  |  |  |  |
| 15 | 4.1 | Traçado, Corte a Plasma e Chanfro das Chapas do Costado e Fundo | 4.25d | 2026-10-08 | 2026-10-14 | 13 | Caldeireiro de Traçado e Corte Plasma; Ajudante Operacional de Caldeiraria e Fábrica | 68h | 3.4 d | 4.3 d | 6.4 d | 100.0% | 4.0 - FABRICAÇÃO E MONTAGEM |
| 16 | 4.2 | Calandragem das Virolas e Pré-Montagem dos Aneis do Costado | 4.25d | 2026-10-14 | 2026-10-20 | 15 | Operador de Calandra e Conformação; Ajudante Operacional de Caldeiraria e Fábrica | 68h | 3.4 d | 4.3 d | 6.4 d | 100.0% | 4.0 - FABRICAÇÃO E MONTAGEM |
| 17 | 4.3 | Soldagem das Juntas Longitudinais e Circunferencias (ASME IX) | 7d | 2026-10-20 | 2026-10-27 | 16 | Soldador Qualificado ASME IX (TIG/MIG/SAW) [200%]; Ajudante Operacional de Caldeiraria e Fábrica [200%] | 227h | 5.7 d | 7.1 d | 10.6 d | 100.0% | 4.0 - FABRICAÇÃO E MONTAGEM |
| 18 | 4.4 | Montagem e Soldagem do Fundo Plano e Teto Cônico Autoportante | 4.25d | 2026-10-27 | 2026-11-02 | 17 | Caldeireiro Montador / Ajustador de Equipamentos [200%]; Soldador Qualificado ASME IX (TIG/MIG/SAW); Ajudante Operacional de Caldeiraria e Fábrica [200%] | 172h | 3.4 d | 4.3 d | 6.4 d | 100.0% | 4.0 - FABRICAÇÃO E MONTAGEM |
| 19 | 4.5 | Fabricação/Instalação de Bocais A1-W1, Boca de Visita M1 e Acessórios | 4.25d | 2026-11-02 | 2026-11-06 | 18 | Caldeireiro Montador / Ajustador de Equipamentos; Soldador Qualificado ASME IX (TIG/MIG/SAW); Ajudante Operacional de Caldeiraria e Fábrica | 103h | 3.4 d | 4.3 d | 6.4 d | 100.0% | 4.0 - FABRICAÇÃO E MONTAGEM |
| 20 | 4.6 | Execução de Ensaios END (Radiografia RX, LP, Caixa de Vácuo e PMI) | 2.25d | 2026-11-06 | 2026-11-11 | 19 | Inspetor de Soldagem / END Nível II (SNQC); Ajudante Operacional de Caldeiraria e Fábrica | 36h | 1.8 d | 2.3 d | 3.4 d | 100.0% | 4.0 - FABRICAÇÃO E MONTAGEM |
| 21 | 4.7 | Preparação e Execução do Teste Hidrostático (TH) Fabril | 2d | 2026-11-11 | 2026-11-13 | 20 | Engenheiro Mecânico de Projetos / Cálculos [50%]; Inspetor de Soldagem / END Nível II (SNQC); Caldeireiro Montador / Ajustador de Equipamentos; Ajudante Operacional de Caldeiraria e Fábrica | 56h | 1.6 d | 2.0 d | 3.0 d | 100.0% | 4.0 - FABRICAÇÃO E MONTAGEM |
| 22 | 5.0 | **5.0 PINTURA (Peso: 7%)** | 7d | 2026-11-13 | 2026-11-20 |  |  |  |  |  |  |  |  |
| 23 | 5.1 | Decapagem Química e Passivação Integral das Superfícies em Aço Inox | 3d | 2026-11-13 | 2026-11-18 | 21 | Pintor Industrial / Tratador de Superfície Inox; Ajudante Operacional de Caldeiraria e Fábrica | 48h | 2.4 d | 3.0 d | 4.5 d | 100.0% | 5.0 - PINTURA |
| 24 | 5.2 | Jateamento e Pintura Externa dos Acessórios em Aço Carbono (Munsell 5Y 8/12) | 2d | 2026-11-18 | 2026-11-20 | 23 | Pintor Industrial / Tratador de Superfície Inox; Ajudante Operacional de Caldeiraria e Fábrica | 32h | 1.6 d | 2.0 d | 3.0 d | 100.0% | 5.0 - PINTURA |

Notes:
- 2: Estimativas de 3 Pontos: Otimista = 0.8d / Provável = 1.0d / Pessimista = 1.5d. / Índice de Criticidade MCMC: 100.0% no Caminho Crítico. / Alocação de Recursos: Engenheiro Mecânico de Projetos [100%], Projetista Mecânico [100%] / Total: 16.0 HH.
- 3: Estimativas de 3 Pontos: Otimista = 0.8d / Provável = 1.0d / Pessimista = 1.5d. / Índice de Criticidade MCMC: 100.0% no Caminho Crítico. / Alocação de Recursos: Engenheiro Mecânico de Projetos [100%] / Total: 8.0 HH.
- 5: Estimativas de 3 Pontos: Otimista = 3.4d / Provável = 4.3d / Pessimista = 6.4d. / Índice de Criticidade MCMC: 100.0% no Caminho Crítico. / Alocação de Recursos: Projetista Mecânico [100%], Engenheiro Mecânico de Projetos [50%] / Total: 51.6 HH.
- 6: Estimativas de 3 Pontos: Otimista = 2.9d / Provável = 3.6d / Pessimista = 5.4d. / Índice de Criticidade MCMC: 100.0% no Caminho Crítico. / Alocação de Recursos: Engenheiro Mecânico de Projetos [100%] / Total: 28.8 HH.
- 7: Estimativas de 3 Pontos: Otimista = 2.2d / Provável = 2.8d / Pessimista = 4.2d. / Índice de Criticidade MCMC: 100.0% no Caminho Crítico. / Alocação de Recursos: Engenheiro Mecânico de Projetos [50%], Inspetor de Soldagem [100%] / Total: 33.6 HH.
- 8: Estimativas de 3 Pontos: Otimista = 2.9d / Provável = 3.6d / Pessimista = 5.4d. / Índice de Criticidade MCMC: 100.0% no Caminho Crítico. / Alocação de Recursos: Engenheiro Mecânico de Projetos [50%] / Total: 14.4 HH.
- 10: Estimativas de 3 Pontos: Otimista = 2.6d / Provável = 3.2d / Pessimista = 4.8d. / Índice de Criticidade MCMC: 100.0% no Caminho Crítico. / Alocação de Recursos: Comprador Técnico Industrial [100%] / Total: 25.6 HH.
- 11: Estimativas de 3 Pontos: Otimista = 10.2d / Provável = 12.8d / Pessimista = 19.2d. / Índice de Criticidade MCMC: 99.9% no Caminho Crítico. / Alocação de Recursos: Comprador Técnico Industrial [25%] / Total: 25.6 HH.
- 12: Estimativas de 3 Pontos: Otimista = 5.1d / Provável = 6.4d / Pessimista = 9.6d. / Índice de Criticidade MCMC: 0.1% no Caminho Crítico. / Alocação de Recursos: Comprador Técnico Industrial [50%] / Total: 25.6 HH.
- 13: Estimativas de 3 Pontos: Otimista = 4.2d / Provável = 5.3d / Pessimista = 7.9d. / Índice de Criticidade MCMC: 100.0% no Caminho Crítico. / Alocação de Recursos: Inspetor de Soldagem [100%], Ajudante Operacional de Caldeiraria e Fábrica [100%] / Total: 84.8 HH.
- 15: Estimativas de 3 Pontos: Otimista = 3.4d / Provável = 4.3d / Pessimista = 6.4d. / Índice de Criticidade MCMC: 100.0% no Caminho Crítico. / Alocação de Recursos: Caldeireiro de Traçado e Corte Plasma [100%], Ajudante Operacional de Caldeiraria e Fábrica [100%] / Total: 68.8 HH.
- 16: Estimativas de 3 Pontos: Otimista = 3.4d / Provável = 4.3d / Pessimista = 6.4d. / Índice de Criticidade MCMC: 100.0% no Caminho Crítico. / Alocação de Recursos: Operador de Calandra e Conformação [100%], Ajudante Operacional de Caldeiraria e Fábrica [100%] / Total: 68.8 HH.
- 17: Estimativas de 3 Pontos: Otimista = 5.7d / Provável = 7.1d / Pessimista = 10.6d. / Índice de Criticidade MCMC: 100.0% no Caminho Crítico. / Alocação de Recursos: Soldador Qualificado ASME IX (TIG [200%], Ajudante Operacional de Caldeiraria e Fábrica [200%] / Total: 227.2 HH.
- 18: Estimativas de 3 Pontos: Otimista = 3.4d / Provável = 4.3d / Pessimista = 6.4d. / Índice de Criticidade MCMC: 100.0% no Caminho Crítico. / Alocação de Recursos: Caldeireiro Montador [200%], Soldador Qualificado ASME IX (TIG [100%], Ajudante Operacional de Caldeiraria e Fábrica [200%] / Total: 172.0 HH.
- 19: Estimativas de 3 Pontos: Otimista = 3.4d / Provável = 4.3d / Pessimista = 6.4d. / Índice de Criticidade MCMC: 100.0% no Caminho Crítico. / Alocação de Recursos: Caldeireiro Montador [100%], Soldador Qualificado ASME IX (TIG [100%], Ajudante Operacional de Caldeiraria e Fábrica [100%] / Total: 103.2 HH.
- 20: Estimativas de 3 Pontos: Otimista = 1.8d / Provável = 2.3d / Pessimista = 3.4d. / Índice de Criticidade MCMC: 100.0% no Caminho Crítico. / Alocação de Recursos: Inspetor de Soldagem [100%], Ajudante Operacional de Caldeiraria e Fábrica [100%] / Total: 36.8 HH.
- 21: Estimativas de 3 Pontos: Otimista = 1.6d / Provável = 2.0d / Pessimista = 3.0d. / Índice de Criticidade MCMC: 100.0% no Caminho Crítico. / Alocação de Recursos: Engenheiro Mecânico de Projetos [50%], Inspetor de Soldagem [100%], Caldeireiro Montador [100%], Ajudante Operacional de Caldeiraria e Fábrica [100%] / Total: 56.0 HH.
- 23: Estimativas de 3 Pontos: Otimista = 2.4d / Provável = 3.0d / Pessimista = 4.5d. / Índice de Criticidade MCMC: 100.0% no Caminho Crítico. / Alocação de Recursos: Pintor Industrial [100%], Ajudante Operacional de Caldeiraria e Fábrica [100%] / Total: 48.0 HH.
- 24: Estimativas de 3 Pontos: Otimista = 1.6d / Provável = 2.0d / Pessimista = 3.0d. / Índice de Criticidade MCMC: 100.0% no Caminho Crítico. / Alocação de Recursos: Pintor Industrial [100%], Ajudante Operacional de Caldeiraria e Fábrica [100%] / Total: 32.0 HH.

| ID | WBS | Task | Duration | Start | Finish | Predecessors | Resources | Work | Estimativa Otimista | Estimativa Provavel | Estimativa Pessimista | Indice Criticidade (%) | Pacote WBS / EAP |
| --- | --- | --- | --- | --- | --- | --- | --- | --- | --- | --- | --- | --- | --- |
| 25 | 6.0 | **6.0 EXPEDIÇÃO (Peso: 1%)** | 5d | 2026-11-20 | 2026-11-25 |  |  |  |  |  |  |  |  |
| 26 | 6.1 | Emissão, Compilação e Aprovação do Data Book Final com ART (SOP-BRA-019-01) | 1d | 2026-11-20 | 2026-11-23 | 24 | Engenheiro Mecânico de Projetos / Cálculos; Inspetor de Soldagem / END Nível II (SNQC) [50%] | 12h | 0.8 d | 1.0 d | 1.5 d | 100.0% | 6.0 - EXPEDIÇÃO |
| 27 | 6.2 | Embalagem Especial, Fabricação do Berço e Carregamento | 1d | 2026-11-23 | 2026-11-24 | 26 | Caldeireiro Montador / Ajustador de Equipamentos; Rigger / Operador de Carga, Berço e Expedição; Ajudante Operacional de Caldeiraria e Fábrica | 24h | 0.8 d | 1.0 d | 1.5 d | 100.0% | 6.0 - EXPEDIÇÃO |
| 28 | 6.3 | Transporte Rodoviário Especial CIF e Entrega Técnica no Polo Camaçari/BA | 1d | 2026-11-24 | 2026-11-25 | 27 | Rigger / Operador de Carga, Berço e Expedição; Comprador Técnico Industrial / Diligenciamento [25%] | 10h | 0.8 d | 1.0 d | 1.5 d | 100.0% | 6.0 - EXPEDIÇÃO |

Notes:
- 26: Estimativas de 3 Pontos: Otimista = 0.8d / Provável = 1.0d / Pessimista = 1.5d. / Índice de Criticidade MCMC: 100.0% no Caminho Crítico. / Alocação de Recursos: Engenheiro Mecânico de Projetos [100%], Inspetor de Soldagem [50%] / Total: 12.0 HH.
- 27: Estimativas de 3 Pontos: Otimista = 0.8d / Provável = 1.0d / Pessimista = 1.5d. / Índice de Criticidade MCMC: 100.0% no Caminho Crítico. / Alocação de Recursos: Caldeireiro Montador [100%], Rigger [100%], Ajudante Operacional de Caldeiraria e Fábrica [100%] / Total: 24.0 HH.
- 28: Estimativas de 3 Pontos: Otimista = 0.8d / Provável = 1.0d / Pessimista = 1.5d. / Índice de Criticidade MCMC: 100.0% no Caminho Crítico. / Alocação de Recursos: Rigger [100%], Comprador Técnico Industrial [25%] / Total: 10.0 HH.
